# Globale planning week 8

Schedule from MS Project, 2015-09-07 to 2015-11-11, 4 hours a day, A marks actual dates.

## Calendars

- Standaard: Mon 08:40-12:40; Tue 09:40-12:40; Wed 08:40-12:40; Thu 08:40-12:20; Fri 08:40-12:40; Sat-Sun off.

## Resources

| Resource |
| --- |
| Teun |
| Jorrit |
| Evelien |
| Iedereen |

## Schedule

| ID | WBS | Task | Type | Duration | Start | Finish | Predecessors | Complete | Remaining | Total slack | Constraint | Deadline | Resources | Work | Actual work |
| --- | --- | --- | --- | --- | --- | --- | --- | --- | --- | --- | --- | --- | --- | --- | --- |
| 1 | 1 | **Inceprion Phase** |  | 11.08d | 2015-09-07 08:40 A | 2015-09-22 12:40 A |  | 100% |  |  |  |  |  | 50h | 50h |
| 2 | 1.1 | 1A. Interview voorbereiden |  | 2h | 2015-09-07 08:40 A | 2015-09-07 10:40 A |  | 100% |  |  |  |  | Iedereen | 2h | 2h |
| 3 | 1.2 | 1B. Interview houden en gespreksverslag terugkoppelen |  | 2h | 2015-09-08 08:40 A | 2015-09-08 10:40 A |  | 100% |  |  |  |  | Iedereen | 2h | 2h |
| 4 | 1.3 | 1C. Hernieuwde opdracht |  | 3h | 2015-09-15 08:40 A | 2015-09-15 12:40 A | 2, 3 | 100% |  |  |  |  | Jorrit | 3h | 3h |
| 5 | 1.4 | 1D. Prototype van schermen gebaseerd op interview |  | 6h | 2015-09-16 08:40 A | 2015-09-17 10:40 A | 2, 3 | 100% |  |  |  |  | Teun | 6h | 6h |
| 6 | 1.5 | 1E. Offerte uitbrengen |  | 6h | 2015-09-17 08:40 A | 2015-09-18 11:00 A |  | 100% |  |  | start no earlier than 2015-09-17 08:40 |  | Jorrit; Teun | 12h | 12h |
| 7 | 1.6 | 1F. Agenda en notulen van elke vergadering |  | 1h | 2015-09-09 08:40 A | 2015-09-09 09:40 A | 2, 3 | 100% |  |  |  |  | Iedereen | 1h | 1h |
| 8 | 1.7 | 1G. Plan van aapak, inclusief risicoanalyse(engels) |  | 6h | 2015-09-14 08:40 A | 2015-09-15 11:40 A | 2, 3 | 100% |  |  |  |  | Evelien | 6h | 6h |
| 9 | 1.8 | 1H. Globle planning voor het gehel project in een planningstool |  | 4h | 2015-09-10 08:40 A | 2015-09-11 09:00 A | 2, 3 | 100% |  |  |  | 2015-09-18 12:40 | Teun | 4h | 4h |
| 10 | 1.9 | Go/No Go | milestone | 1min | 2015-09-18 11:00 A | 2015-09-18 11:01 A | 2, 3, 4, 5, 6, 7, 8, 9 | 100% |  |  |  |  |  |  |  |
| 11 | 1.10 | 1J. Gedetailleerde taakverdeling van het functioneel ontwerp in MS-project |  | 1h | 2015-09-18 11:01 A | 2015-09-18 12:01 A | 10 | 100% |  |  |  |  | Teun | 1h | 1h |
| 12 | 1.11 | 1K. Use-case diagram |  | 2h | 2015-09-18 11:01 A | 2015-09-21 09:01 A | 10 | 100% |  |  | start no earlier than 2015-09-17 08:40 |  | Evelien | 2h | 2h |
| 13 | 1.12 | 1L. Use-case templates |  | 4h | 2015-09-21 09:01 A | 2015-09-22 10:01 A | 10, 12 | 100% |  |  |  |  | Evelien; Jorrit | 8h | 8h |
| 14 | 1.13 | 1M. Activiteitendiagrammen |  | 3h | 2015-09-22 09:40 A | 2015-09-22 12:40 A | 10 | 100% |  |  | start no earlier than 2015-09-22 08:40 | 2015-09-18 12:40 | Teun | 3h | 3h |
| 15 | 1.14 | Afronden Inception Phase Go/No Go | milestone | 1min | 2015-09-22 09:40 A | 2015-09-22 09:41 A | 10 | 100% |  |  | start no earlier than 2015-09-22 08:40 |  |  |  |  |
| 16 | 2 | **Elaboration Phase** |  | 2.67d | 2015-09-22 09:41 A | 2015-09-25 08:41 | 15 | 71% | 0.76d | 30.75d |  |  |  | 12h | 12h |
| 17 | 2.1 | 2A. Gedatailleerde taakverdeling van het technisch ontwerp in MS-Project |  | 2h | 2015-09-22 09:41 A | 2015-09-22 11:41 A | 15 | 100% |  |  |  |  | Teun | 2h | 2h |
| 18 | 2.2 | 2B. Modeldictionary (optioneel) |  | 2h | 2015-09-22 09:41 | 2015-09-22 11:41 | 15 |  |  | 32.92d |  |  |  |  |  |
| 19 | 2.3 | 2C. Klassendiagram (optioneel) |  | 2h | 2015-09-22 09:41 | 2015-09-22 11:41 | 15 |  |  | 32.92d |  |  |  |  |  |
| 20 | 2.4 | 2D. Ontwerp datadictionary |  | 2h | 2015-09-23 08:40 A | 2015-09-23 10:40 A | 15 | 100% |  |  | start no earlier than 2015-09-23 08:40 |  | Jorrit | 2h | 2h |
| 21 | 2.5 | 2E. Sequentiediagrammen |  | 2h | 2015-09-23 08:40 A | 2015-09-23 10:40 A | 15 | 100% |  |  | start no earlier than 2015-09-23 08:40 |  | Evelien; Jorrit | 4h | 4h |
| 22 | 2.6 | 2F. Overzicht taakverdeling |  | 3h | 2015-09-23 08:40 A | 2015-09-23 11:40 A | 15 | 100% |  |  | start no earlier than 2015-09-23 08:40 |  | Evelien | 3h | 3h |
| 23 | 2.7 | G2. Overzicht van de gebruikte hard- en software van de ingerichte ontwikkelomgeving |  | 1h | 2015-09-24 08:40 A | 2015-09-24 09:40 A | 15 | 100% |  |  | start no earlier than 2015-09-24 08:40 |  | Teun | 1h | 1h |
| 24 | 2.8 | Afronding Elaboration Phase Go/No Go | milestone | 1min | 2015-09-25 08:40 A | 2015-09-25 08:41 A | 15 | 100% |  |  | start no earlier than 2015-09-25 08:40 |  |  |  |  |

| ID | WBS | Task | Type | Duration | Start | Finish | Predecessors | Complete | Remaining | Total slack | Free slack | Constraint | Deadline |
| --- | --- | --- | --- | --- | --- | --- | --- | --- | --- | --- | --- | --- | --- |
| 26 | 3 | **Construction Phase** |  | 30d | 2015-09-25 08:41 A | 2015-11-09 12:40 | 24 | 8% | 27.69d | 0.75d |  |  |  |
| 27 | 3.1 | 3A. Genormaliseerd databaseontwerp |  | 2h | 2015-09-25 08:41 A | 2015-09-25 10:41 A | 24 | 100% |  |  |  |  |  |
| 28 | 3.2 | 3B. Definitieve datadictionary |  | 2h | 2015-09-28 08:40 A | 2015-09-28 10:40 A | 24 | 100% |  |  |  | start no earlier than 2015-09-28 08:40 |  |
| 29 | 3.3 | 3C. Werkende webapplicatie (v1.0.0) Alles functionaliteit is gerealiseerd |  | 16d | 2015-10-14 12:20 | 2015-11-06 12:40 | 24 |  |  | 0.75d | 0d | finish no earlier than 2015-11-06 12:40 |  |
| 30 | 3.4 | 3D. Dataset (Lijsten van ingevoerde en dus geteste data) |  | 2h | 2015-09-29 09:40 | 2015-09-29 11:40 | 24 |  |  | 28.25d |  | start no earlier than 2015-09-29 08:40 |  |
| 31 | 3.5 | 3E. Technische test is gemaakt |  | 2h | 2015-11-09 08:40 | 2015-11-09 10:40 | 24, 29 |  |  | 0.75d | 0d | start no earlier than 2015-10-22 08:40 |  |
| 32 | 3.6 | 3F. Technische test is uitgevoerd |  | 2h | 2015-11-09 10:40 | 2015-11-09 12:40 | 24, 29, 31 |  |  | 0.75d |  |  |  |
| 33 | 3.7 | 3G. Functionele test is gemaakt |  | 2h | 2015-11-09 08:40 A | 2015-11-09 10:40 A | 24, 29 | 100% |  |  |  |  |  |
| 34 | 3.8 | 3H. Functionele test is uitgevoerd |  | 2h | 2015-11-09 10:40 | 2015-11-09 12:40 | 24, 29, 33 |  |  | 0.75d |  |  |  |
| 35 | 3.9 | Afronden Construction Phase Go/No Go | milestone | 1min | 2015-10-23 08:40 | 2015-10-23 08:41 | 24 |  |  | 10.32d | 8.41d | start no earlier than 2015-10-23 08:40 |  |
| 37 | 4 | **Transition Phase** |  | 3.67d | 2015-11-05 08:40 | 2015-11-11 08:41 |  |  |  |  |  |  |  |
| 38 | 4.1 | 4A. Acceptatietest is uitgevoerd bij de opdrachtgever |  | 2h | 2015-11-05 08:40 | 2015-11-05 10:40 | 35 |  |  | 3.17d |  | start no earlier than 2015-11-05 08:40 |  |
| 39 | 4.2 | 4B. Gebruikerhandleiding |  | 2h | 2015-11-05 08:40 | 2015-11-05 10:40 | 35 |  |  | 3.17d |  | start no earlier than 2015-11-05 08:40 |  |
| 40 | 4.3 | 4C. Projectrapport |  | 2h | 2015-11-05 08:40 | 2015-11-05 10:40 | 35 |  |  | 3.17d |  | start no earlier than 2015-11-05 08:40 |  |
| 41 | 4.4 | 4D. Teamrapport |  | 2h | 2015-11-05 08:40 | 2015-11-05 10:40 | 35 |  |  | 3.17d |  | start no earlier than 2015-11-05 08:40 |  |
| 42 | 4.5 | 4E. Presentatie |  | 1h | 2015-11-05 08:40 | 2015-11-05 09:40 | 35 |  |  | 3.42d |  | start no earlier than 2015-11-05 08:40 |  |
| 43 | 4.6 | 4F. Logboek Tijdregistratie |  | 3h | 2015-11-05 08:40 | 2015-11-05 11:40 | 35 |  |  | 2.92d |  | start no earlier than 2015-11-05 08:40 |  |
| 44 | 4.7 | Afronding Transition Phase | milestone | 1min | 2015-11-05 08:40 | 2015-11-05 08:41 | 35 |  |  | 1.91d |  | start no earlier than 2015-11-05 08:40 | 2015-11-06 12:40 |
